How a schedule from MS Project changed from version to version. A marks actual dates.

## Version 1 (saved 2016-08-11, file 翌支付二期需求开发任务计划V1.0.mpp)

Note of the change: 项目资料

| ID | WBS | Task | Duration | Start | Finish |
| --- | --- | --- | --- | --- | --- |
| 1 | 1 | **翌支付二期研发工作安排** | 1d? | 2009-11-16 | 2009-11-17 |
| 2 | 1.1 | **一期功能优化** | 1d? | 2009-11-16 | 2009-11-17 |
| 3 |  | 前端优化 | 7d | 2016-08-22 | 2016-08-31 |
| 4 |  | PHP后台优化 | 7d | 2016-08-22 | 2016-08-31 |
| 5 | 1.2 | **二期新功能研发** | 1d? | 2009-11-16 | 2009-11-17 |
| 6 | 1.2.1 | **设计/规划** | 1d? | 2009-11-16 | 2009-11-17 |
| 7 | 1.2.1.1 | **产品需求设计** | 14d | 2016-07-20 | 2016-08-09 |
| 8 |  | 企业资料修改审核的布局（重新设计) | 2d | 2016-07-20 | 2016-07-22 |
| 9 |  | 订单管理处理--商户门户新增异常订单查看页面（需新设计） | 2d | 2016-07-22 | 2016-07-26 |
| 10 |  | 配置管理模块原型设计 | 2d | 2016-07-25 | 2016-07-27 |
| 11 |  | 对账单管理模块原型设计 | 2d | 2016-07-28 | 2016-08-01 |
| 12 |  | 二期需求文档输出 | 1d | 2016-08-03 | 2016-08-04 |
| 13 |  | 二期需求文档评审 | 1d | 2016-08-08 | 2016-08-09 |
| 14 | 1.2.1.2 | **研发设计** | 1d? | 2009-11-16 | 2009-11-17 |
| 15 | 1.2.1.2.1 | **PHP后台设计** | 1d? | 2009-11-16 | 2009-11-17 |
| 16 |  | 配置管理模块设计 | 2d | 2016-08-15 | 2016-08-17 |
| 17 |  | 对账单模块设计 | 2d | 2016-08-15 | 2016-08-17 |
| 18 | 1.2.1.2.2 | **前端设计** | 1d? | 2009-11-16 | 2009-11-17 |
| 19 |  | 配置管理模块设计 | 2d | 2016-08-15 | 2016-08-17 |
| 20 |  | 对账单模块设计 | 2d | 2016-08-15 | 2016-08-17 |
| 21 | 1.2.2 | **编码开发** | 1d? | 2009-11-16 | 2009-11-17 |
| 22 | 1.2.2.1 | **PHP后台编码** | 1d? | 2009-11-16 | 2009-11-17 |
| 23 |  | 配置管理模块编码 | 2d | 2016-09-06 | 2016-09-08 |
| 24 |  | 对账单管理模块编码 | 4d | 2016-09-08 | 2016-09-14 |
| 25 | 1.2.2.2 | **前端编码** | 1d? | 2009-11-16 | 2009-11-17 |
| 26 |  | 配置管理模块编码 | 2d | 2016-09-06 | 2016-09-08 |
| 27 |  | 对账单管理模块编码 | 4d | 2016-09-08 | 2016-09-14 |
| 28 | 1.3 | **三大系统整合工作** | 1d? | 2009-11-16 | 2009-11-17 |
| 29 |  | 数据库设计及调整 | 0.5d | 2016-08-08 | 2016-08-08 |
| 30 |  | 加密方式设计及调整 | 0.5d | 2016-08-09 | 2016-08-09 |
| 31 |  | 商户数据设计及调整 | 0.5d | 2016-08-10 | 2016-08-10 |
| 32 |  | 渠道分离设计及调整 | 0.5d | 2016-08-11 | 2016-08-11 |
| 33 | 1.3.5 | **各渠道业务流程调整** | 1d? | 2009-11-16 | 2009-11-17 |
| 34 | 1.3.5.1 | **支付宝渠道业务调整** | 10d | 2009-11-16 | 2009-11-30 |
| 35 | 1.3.5.1.1 | **支付业务逻辑修改** | 7d | 2009-11-16 | 2009-11-25 |
| 36 |  | PC端 | 1d | 2016-08-22 | 2016-08-23 |
| 37 |  | WAP端 | 2d | 2016-08-24 | 2016-08-26 |
| 38 |  | IOS端 | 2d | 2016-08-29 | 2016-08-31 |
| 39 |  | Android端 | 2d | 2016-09-01 | 2016-09-05 |
| 40 |  | 转账业务逻辑修改 | 2d | 2016-09-06 | 2016-09-08 |
| 41 |  | 退款业务逻辑修改 | 1d | 2016-09-09 | 2016-09-12 |
| 42 | 1.3.5.2 | **微信渠道业务调整** | 10d | 2009-11-16 | 2009-11-30 |
| 43 | 1.3.5.2.1 | **支付业务逻辑修改** | 1d | 2009-11-16 | 2009-11-17 |
| 44 |  | PC端 | 1d | 2016-08-22 | 2016-08-23 |
| 45 |  | WAP端 | 2d | 2016-08-24 | 2016-08-26 |
| 46 |  | IOS端 | 2d | 2016-08-29 | 2016-08-31 |
| 47 |  | Android端 | 2d | 2016-09-01 | 2016-09-05 |
| 48 |  | 转账业务逻辑修改 | 2d | 2016-09-06 | 2016-09-08 |
| 49 |  | 退款业务逻辑修改 | 1d | 2016-09-09 | 2016-09-12 |
| 50 | 1.3.5.3 | **银联渠道业务调整** | 10d | 2009-11-16 | 2009-11-30 |
| 51 | 1.3.5.3.1 | **支付业务逻辑修改** | 1d | 2009-11-16 | 2009-11-17 |
| 52 |  | PC端 | 1d | 2016-09-12 | 2016-09-13 |
| 53 |  | WAP端 | 2d | 2016-09-14 | 2016-09-16 |
| 54 |  | IOS端 | 2d | 2016-09-19 | 2016-09-21 |
| 55 |  | Android端 | 2d | 2016-09-22 | 2016-09-26 |
| 56 |  | 转账业务逻辑修改 | 2d | 2016-09-27 | 2016-09-29 |
| 57 |  | 退款业务逻辑修改 | 1d | 2016-09-30 | 2016-09-30 |
| 58 | 1.3.5.4 | **中行渠道业务调整** | 10d | 2009-11-16 | 2009-11-30 |
| 59 | 1.3.5.4.1 | **支付业务逻辑修改** | 1d? | 2009-11-16 | 2009-11-17 |
| 60 |  | PC端 | 1d | 2016-09-12 | 2016-09-13 |
| 61 |  | WAP端 | 2d | 2016-09-14 | 2016-09-16 |
| 62 |  | IOS端 | 2d | 2016-09-19 | 2016-09-21 |
| 63 |  | Android端 | 2d | 2016-09-22 | 2016-09-26 |
| 64 |  | 转账业务逻辑修改 | 2d | 2016-09-27 | 2016-09-29 |
| 65 |  | 退款业务逻辑修改 | 1d | 2016-09-30 | 2016-09-30 |
| 66 | 1.3.5.5 | **中金支付渠道业务调整** | 10d | 2009-11-16 | 2009-11-30 |
| 67 | 1.3.5.5.1 | **支付业务逻辑修改** | 1d? | 2009-11-16 | 2009-11-17 |
| 68 |  | PC端 | 1d | 2016-09-12 | 2016-09-13 |
| 69 |  | WAP端 | 2d | 2016-09-14 | 2016-09-16 |
| 70 |  | IOS端 | 2d | 2016-09-19 | 2016-09-21 |

| ID | WBS | Task | Duration | Start | Finish | Predecessors | Total float | Constraint |
| --- | --- | --- | --- | --- | --- | --- | --- | --- |
| 71 |  | Android端 | 2d | 2016-09-22 | 2016-09-26 |  |  |  |
| 72 |  | 转账业务逻辑修改 | 2d | 2016-09-27 | 2016-09-29 |  |  |  |
| 73 |  | 退款业务逻辑修改 | 1d | 2016-09-30 | 2016-09-30 |  |  |  |
| 74 |  | 系统全流程联调 | 4d | 2016-10-08 | 2016-10-13 |  |  |  |
| 75 | 3 | **翌支付测试工作安排** | 1d? | 2009-11-16 | 2009-11-17 |  |  |  |
| 76 | 3.1 | **测试执行** | 13d? | 2009-11-16 | 2009-12-03 |  |  |  |
| 77 | 3.1.1 | **第一轮测试：本期新功能测试执行，企业门户与运营平台主流程回归** | 5d? | 2009-11-16 | 2009-11-23 |  |  |  |
| 78 |  | 运营管理平台：企业资料修改审核、异常订单处理、参数配置、邮件模板列表、短信模板列表 | 4d | 2016-10-14 | 2016-10-19 |  |  | start no earlier than 2016-10-14 |
| 79 |  | 企业门户：订单管理、异常订单、我的资料 | 3d | 2016-10-20 | 2016-10-25 |  | -1821d | start no earlier than 2016-10-20 |
| 80 |  | 企业门户与运营平台主流程回归 | 2d | 2016-10-25 | 2016-10-27 | 79 | -1821d |  |
| 81 | 3.1.2 | **第二轮测试：第一轮缺陷回归及系统功能集成测试（兼容性测试）** | 4d? | 2009-11-16 | 2009-11-20 |  |  |  |
| 82 |  | 第一轮产生缺陷回归 | 2d | 2016-10-27 | 2016-10-31 | 80 | -1821d | start no earlier than 2015-09-16 |
| 83 |  | 企业门户、运营平台全功能回归（包括新旧功能） | 2d | 2016-10-31 | 2016-11-02 | 82 | -1821d |  |
| 84 | 3.1.3 | **第三轮测试：全量回归，全测试用例及缺陷回归** | 4d | 2016-11-02 | 2016-11-08 |  | -1821d |  |
| 85 |  | 前两轮产生缺陷回归 | 2d | 2016-11-02 | 2016-11-04 | 83 | -1821d |  |
| 86 |  | 全流程回归 | 2d | 2016-11-04 | 2016-11-08 | 85 | -1821d |  |
| 87 |  | 测试阶段报告编写 | 0.25d | 2016-11-08 | 2016-11-08 | 86 | 3.62d | start no earlier than 2015-09-24 |
| 88 |  | 用户手册编写及评审 | 1d | 2016-11-08 | 2016-11-09 | 86 | -1821d |  |
| 89 | 4 | **翌支付部署工作安排** | 53d? | 2009-11-16 | 2010-01-28 |  |  |  |
| 90 | 4.1 | **测试环境部署** | 1d? | 2009-11-16 | 2009-11-17 |  |  |  |
| 91 |  | 测试服务器申请 | 2d | 2016-09-19 | 2016-09-21 |  |  |  |
| 92 |  | 基础软件安装 | 1d | 2016-09-22 | 2016-09-23 |  |  |  |
| 93 |  | 测试环境配置 | 1d | 2016-09-26 | 2016-09-27 |  |  |  |
| 94 |  | 测试环境联调(渠道分离) | 4d | 2016-09-28 | 2016-10-04 |  |  |  |
| 95 | 4.2 | **正式环境部署** | 1d? | 2009-11-16 | 2009-11-17 |  |  |  |
| 96 |  | 生产服务器申请 | 2d | 2016-10-20 | 2016-10-24 |  |  |  |
| 97 |  | 基础软件安装 | 1d | 2016-10-25 | 2016-10-26 |  |  |  |
| 98 |  | 生产环境配置（渠道分离） | 1d | 2016-10-27 | 2016-10-28 |  |  |  |
| 99 |  | 生产环境联调 | 4d | 2016-10-31 | 2016-11-04 |  |  |  |
| 100 |  | 正式上线 | 1d | 2016-11-04 | 2016-11-04 |  |  |  |
| 101 | 5 | **项目转维工作安排** | 6d? | 2009-11-16 | 2009-11-24 |  |  |  |
| 102 |  | 转维资料准备 | 3d | 2016-11-07 | 2016-11-10 |  |  |  |
| 103 |  | 安排转维培训 | 1d | 2016-11-11 | 2016-11-11 |  |  |  |

## Version 2 (saved 2016-10-25, file 翌支付二期需求开发任务计划V2.0.mpp)

Note of the change: 项目资料

Last finish 2016-11-11 → 2016-10-27 (-15d). Complete tasks 0 → 67.

Added:

| ID | Task | Duration | Start | Finish | Resources |
| --- | --- | --- | --- | --- | --- |
| 10 | 邮件&短信模板设置设计 | 1d | 2016-07-26 A | 2016-07-26 A |  |
| 15 | 增加转账功能的业务需求设计及原型设计 | 1d | 2016-09-05 | 2016-09-05 | 雅飞 |
| 18 | 企业资料修改模块 | 1d | 2016-08-15 A | 2016-08-15 A | 腾渊 |
| 19 | 短信&邮件模板设置 | 1d | 2016-08-16 A | 2016-08-16 A | 腾渊 |
| 20 | 异常订单管理模块 | 1d | 2016-08-17 A | 2016-08-17 A | 腾渊 |
| 23 | 增加转账功能的后台接口设计 | 1d | 2016-09-06 | 2016-09-06 | 腾渊 |
| 25 | 企业资料修改模块 | 1d | 2016-08-22 A | 2016-08-23 A | 无涯 |
| 26 | 短信&邮件模板设置 | 0.5d | 2016-08-22 A | 2016-08-22 A | 澄泓 |
| 27 | 异常订单管理模块 | 0.5d | 2016-08-24 A | 2016-08-24 A | 无涯 |
| 30 | 增加转账功能的设计 | 0.5d | 2016-09-06 | 2016-09-06 | 无涯 |
| 33 | 企业资料修改模块 | 2d | 2016-08-22 A | 2016-08-23 A | 腾渊 |
| 34 | 短信&邮件模板设置 | 2d | 2016-08-24 A | 2016-08-25 A | 腾渊 |
| 35 | 异常订单管理模块 | 3d | 2016-08-26 A | 2016-08-30 A | 腾渊 |
| 38 | 增加转账功能相关的开发 | 1d | 2016-09-07 A | 2016-09-07 A | 腾渊 |
| 40 | 企业资料修改模块 | 1d | 2016-08-24 A | 2016-08-24 A | 无涯 |
| 41 | 短信&邮件模板设置 | 1.5d | 2016-08-24 A | 2016-08-25 A | 澄泓 |
| 42 | 异常订单管理模块 | 3d | 2016-08-25 A | 2016-08-30 A | 无涯 |
| 45 | 增加转账功能相关的开发 | 8d | 2016-09-08 A | 2016-09-19 A | 无涯 |
| 94 | 测试用例编写 | 1d | 2016-08-25 | 2016-08-25 | 如善 |
| 95 | 测试用例评审 | 0.5d | 2016-08-26 | 2016-08-26 | 如善 |

Changed:

| ID | Task | Start | Finish | Duration | Complete | Total float | Predecessors | Other |
| --- | --- | --- | --- | --- | --- | --- | --- | --- |
| 1 | **翌支付二期研发工作安排** | 2009-11-16 → 2016-08-15 (+2464d) | 2009-11-17 → 2016-10-27 (+2536d) | 1d? → 54d | 0% → 82% |  |  |  |
| 2 | **一期功能优化** | 2009-11-16 → 2016-08-15 (+2464d) | 2009-11-17 → 2016-08-24 (+2472d) | 1d? → 8d |  |  |  |  |
| 3 | 前端优化 | 2016-08-22 → 2016-08-15 (-7d) | 2016-08-31 → 2016-08-24 (-7d) |  |  |  |  |  |
| 4 | PHP后台优化 | 2016-08-22 → 2016-08-15 (-7d) | 2016-08-31 → 2016-08-24 (-7d) |  |  |  |  |  |
| 5 | **二期新功能研发** | 2009-11-16 → 2016-07-20 A (+2438d) | 2009-11-17 → 2016-09-05 (+2484d) | 1d? → 34d | 0% → 96% |  |  |  |
| 6 | **设计/规划** | 2009-11-16 → 2016-07-20 A (+2438d) | 2009-11-17 → 2016-09-05 (+2484d) | 1d? → 34d | 0% → 89% |  |  |  |
| 7 | **产品需求设计** | 2016-07-20 A | 2016-08-09 → 2016-09-05 (+27d) | 14d → 34d | 0% → 92% |  |  |  |
| 8 | 企业资料修改审核的布局优化设计 | 2016-07-20 A | 2016-07-22 → 2016-07-21 A (-1d) |  | 0% → 100% |  |  | was named 企业资料修改审核的布局（重新设计) |
| 9 | 异常订单管理 | 2016-07-22 A | 2016-07-26 → 2016-07-25 A (-1d) |  | 0% → 100% |  |  | was named 订单管理处理--商户门户新增异常订单查看页面（需新设计） |
| 11 | 配置管理模块原型设计 | 2016-07-25 → 2016-07-27 A (+2d) | 2016-07-27 → 2016-07-28 A (+1d) |  | 0% → 100% |  |  |  |
| 12 | 对账单管理模块原型设计 | 2016-07-28 → 2016-07-29 A (+1d) | 2016-08-01 A |  | 0% → 100% |  |  |  |
| 13 | 二期需求文档输出 | 2016-08-03 → 2016-08-02 A (-1d) | 2016-08-04 → 2016-08-02 A (-2d) |  | 0% → 100% |  |  |  |
| 14 | 二期需求文档评审 | 2016-08-08 → 2016-08-03 A (-5d) | 2016-08-09 → 2016-08-04 A (-5d) |  | 0% → 100% |  |  |  |
| 16 | **研发设计** | 2009-11-16 → 2016-08-15 A (+2464d) | 2009-11-17 → 2016-08-26 (+2474d) | 1d? → 10d | 0% → 87% |  |  |  |
| 17 | **PHP后台设计** | 2009-11-16 → 2016-08-15 A (+2464d) | 2009-11-17 → 2016-08-19 (+2467d) | 1d? → 5d | 0% → 88% |  |  |  |
| 21 | 配置管理模块设计 | 2016-08-15 → 2016-08-18 A (+3d) | 2016-08-17 → 2016-08-19 A (+2d) |  | 0% → 100% |  |  | resources 卓尔 → 腾渊 |
| 22 | 对账单模块设计 | 2016-08-15 A | 2016-08-17 → 2016-08-16 A (-1d) |  | 0% → 100% |  |  | resources 腾渊 → 卓尔 |
| 24 | **前端设计** | 2009-11-16 → 2016-08-15 (+2464d) | 2009-11-17 → 2016-08-26 (+2474d) | 1d? → 10d | 0% → 86% |  |  |  |
| 28 | 配置管理模块设计 | 2016-08-15 → 2016-08-23 A (+8d) | 2016-08-17 → 2016-08-23 A (+6d) | 2d → 0.5d | 0% → 100% |  |  |  |
| 29 | 对账单模块设计 | 2016-08-15 → 2016-08-25 A (+10d) | 2016-08-17 → 2016-08-25 A (+8d) | 2d → 0.5d | 0% → 100% |  |  |  |
| 31 | **编码开发** | 2009-11-16 → 2016-08-22 (+2471d) | 2009-11-17 → 2016-09-05 (+2484d) | 1d? → 11d | 0% → 100% |  |  |  |
| 32 | **PHP后台编码** | 2009-11-16 → 2016-08-22 (+2471d) | 2009-11-17 → 2016-09-02 (+2481d) | 1d? → 10d | 0% → 100% |  |  |  |
| 36 | 配置管理模块编码 | 2016-09-06 → 2016-09-01 A (-5d) | 2016-09-08 → 2016-09-02 A (-6d) |  | 0% → 100% |  |  | resources 卓尔 → 腾渊 |
| 37 | 对账单管理模块编码 | 2016-09-08 → 2016-08-17 A (-22d) | 2016-09-14 → 2016-08-24 A (-21d) | 4d → 5d | 0% → 100% |  |  | resources 腾渊 → 卓尔 |
| 39 | **前端编码** | 2009-11-16 → 2016-08-24 A (+2473d) | 2009-11-17 → 2016-09-05 (+2484d) | 1d? → 9d | 0% → 100% |  |  |  |
| 43 | 配置管理模块编码 | 2016-09-06 → 2016-08-26 A (-11d) | 2016-09-08 → 2016-08-30 A (-9d) |  | 0% → 100% |  |  |  |
| 44 | 对账单管理模块编码 | 2016-09-08 → 2016-09-01 A (-7d) | 2016-09-14 → 2016-09-05 A (-9d) | 4d → 3d | 0% → 100% |  |  |  |
| 46 | **三大系统整合工作** | 2009-11-16 → 2016-08-08 A (+2457d) | 2009-11-17 → 2016-09-22 (+2501d) | 1d? → 34d | 0% → 94% |  |  |  |
| 47 | 数据库设计及调整 | 2016-08-08 A | 2016-08-08 A |  | 0% → 100% |  |  |  |
| 48 | 加密方式设计及调整 | 2016-08-09 A | 2016-08-09 A |  | 0% → 100% |  |  |  |
| 49 | 商户数据设计及调整 | 2016-08-10 A | 2016-08-10 A |  | 0% → 100% |  |  |  |
| 50 | 渠道分离设计及调整 | 2016-08-11 A | 2016-08-11 A |  | 0% → 100% |  |  |  |
| 51 | **各渠道业务流程调整** | 2009-11-16 → 2016-08-08 A (+2457d) | 2009-11-17 → 2016-09-22 (+2501d) | 1d? → 34d | 0% → 93% |  |  |  |
| 52 | **支付宝渠道业务调整** | 2009-11-16 → 2016-08-08 A (+2457d) | 2009-11-30 → 2016-09-08 A (+2474d) | 10d → 24d | 0% → 100% |  |  |  |
| 53 | **支付业务逻辑修改** | 2009-11-16 → 2016-08-08 A (+2457d) | 2009-11-25 → 2016-09-08 A (+2479d) | 7d → 24d | 0% → 100% |  |  |  |
| 54 | PC端 | 2016-08-22 → 2016-08-08 A (-14d) | 2016-08-23 → 2016-08-08 A (-15d) |  | 0% → 100% |  |  | resources 卓尔 → 春泽 |
| 55 | WAP端 | 2016-08-24 → 2016-08-09 A (-15d) | 2016-08-26 → 2016-08-10 A (-16d) |  | 0% → 100% |  |  | resources 卓尔 → 春泽 |
| 56 | IOS端 | 2016-08-29 → 2016-09-05 A (+7d) | 2016-08-31 → 2016-09-06 A (+6d) |  | 0% → 100% |  |  |  |
| 57 | Android端 | 2016-09-01 → 2016-09-07 A (+6d) | 2016-09-05 → 2016-09-08 A (+3d) |  | 0% → 100% |  |  |  |
| 58 | 转账业务逻辑 | 2016-09-06 → 2016-09-01 A (-5d) | 2016-09-08 → 2016-09-05 A (-3d) |  | 0% → 100% |  |  | was named 转账业务逻辑修改; resources 卓尔 → 腾渊 |
| 59 | 退款业务逻辑修改 | 2016-09-09 → 2016-08-24 A (-16d) | 2016-09-12 → 2016-08-25 A (-18d) |  | 0% → 100% |  |  |  |
| 60 | **微信渠道业务调整** | 2009-11-16 → 2016-08-08 A (+2457d) | 2009-11-30 → 2016-09-14 A (+2480d) | 10d → 28d | 0% → 100% |  |  |  |
| 61 | **支付业务逻辑修改** | 2009-11-16 → 2016-08-08 A (+2457d) | 2009-11-17 → 2016-09-14 A (+2493d) | 1d → 28d | 0% → 100% |  |  |  |
| 62 | PC端 | 2016-08-22 → 2016-08-08 A (-14d) | 2016-08-23 → 2016-08-08 A (-15d) |  | 0% → 100% |  |  | resources 腾渊 → 春泽 |
| 63 | WAP端 | 2016-08-24 → 2016-08-09 A (-15d) | 2016-08-26 → 2016-08-10 A (-16d) |  | 0% → 100% |  |  | resources 腾渊 → 春泽 |
| 64 | IOS端 | 2016-08-29 → 2016-09-09 A (+11d) | 2016-08-31 → 2016-09-12 A (+12d) |  | 0% → 100% |  |  | resources 腾渊 → 卓尔 |
| 65 | Android端 | 2016-09-01 → 2016-09-13 A (+12d) | 2016-09-05 → 2016-09-14 A (+9d) |  | 0% → 100% |  |  | resources 腾渊 → 卓尔 |
| 66 | 转账业务逻辑 | 2016-09-06 → 2016-09-05 A (-1d) | 2016-09-08 → 2016-09-07 A (-1d) |  | 0% → 100% |  |  | was named 转账业务逻辑修改 |
| 67 | 退款业务逻辑修改 | 2016-09-09 → 2016-08-26 A (-14d) | 2016-09-12 → 2016-08-26 A (-17d) |  | 0% → 100% |  |  | resources 腾渊 → 卓尔 |
| 68 | **银联渠道业务调整** | 2009-11-16 → 2016-09-05 (+2485d) | 2009-11-30 → 2016-09-22 (+2488d) | 10d → 14d | 0% → 80% |  |  |  |
| 69 | **支付业务逻辑修改** | 2009-11-16 → 2016-09-05 A (+2485d) | 2009-11-17 → 2016-09-22 A (+2501d) | 1d → 14d | 0% → 100% |  |  |  |
| 70 | PC端 | 2016-09-12 → 2016-09-05 A (-7d) | 2016-09-13 → 2016-09-05 A (-8d) |  | 0% → 100% |  |  | resources 卓尔 → 春泽 |
| 71 | WAP端 | 2016-09-14 → 2016-09-06 A (-8d) | 2016-09-16 → 2016-09-07 A (-9d) |  | 0% → 100% |  |  | resources 卓尔 → 春泽 |
| 72 | IOS端 | 2016-09-19 → 2016-09-15 A (-4d) | 2016-09-21 → 2016-09-19 A (-2d) |  | 0% → 100% |  |  |  |
| 73 | Android端 | 2016-09-22 → 2016-09-20 A (-2d) | 2016-09-26 → 2016-09-22 A (-4d) |  | 0% → 100% |  |  |  |
| 74 | 转账业务逻辑 | 2016-09-27 → 2016-09-07 (-20d) | 2016-09-29 → 2016-09-09 (-20d) |  |  |  |  | was named 转账业务逻辑修改; resources 卓尔 → 腾渊 |
| 75 | 退款业务逻辑修改 | 2016-09-30 → 2016-08-29 A (-32d) | 2016-09-30 → 2016-08-29 A (-32d) |  | 0% → 100% |  |  |  |
| 76 | **工行渠道业务调整** | 2009-11-16 → 2016-08-08 (+2457d) | 2009-11-30 → 2016-08-22 (+2457d) |  |  |  |  | was named 中行渠道业务调整 |
| 77 | **支付业务逻辑修改** | 2009-11-16 → 2016-08-08 (+2457d) | 2009-11-17 → 2016-08-09 (+2457d) |  |  |  |  |  |
| 84 | **中金支付渠道业务调整** | 2009-11-16 → 2016-08-08 (+2457d) | 2009-11-30 → 2016-08-22 (+2457d) |  |  |  |  |  |
| 85 | **支付业务逻辑修改** | 2009-11-16 → 2016-08-08 (+2457d) | 2009-11-17 → 2016-08-09 (+2457d) |  |  |  |  |  |
| 92 | 系统全流程联调 | 2016-10-08 → 2016-09-15 A (-23d) | 2016-10-13 → 2016-09-22 A (-21d) | 4d → 6d | 0% → 100% |  |  | resources 秉谦 → none |
| 93 | **翌支付测试工作安排** | 2009-11-16 → 2016-08-25 A (+2474d) | 2009-11-17 → 2016-10-19 (+2528d) | 1d? → 40d | 0% → 87% |  |  |  |
| 96 | **测试执行** | 2009-11-16 → 2016-09-23 A (+2503d) | 2009-12-03 → 2016-10-18 A (+2511d) | 13d? → 18d | 0% → 100% |  |  |  |
| 97 | **第一轮测试：本期新功能测试执行，企业门户与运营平台主流程回归** | 2009-11-16 → 2016-09-23 A (+2503d) | 2009-11-23 → 2016-09-30 A (+2503d) | 5d? → 6d | 0% → 100% |  |  |  |
| 98 | 运营管理平台：企业资料修改审核、异常订单处理、参数配置、邮件模板列表、短信模板列表 | 2016-10-14 → 2016-09-23 A (-21d) | 2016-10-19 → 2016-09-27 A (-22d) | 4d → 3d | 0% → 100% |  |  | constraint start no earlier than 2016-10-14 → start no earlier than 2016-09-23 |
| 99 | 企业门户：订单管理、异常订单、我的资料 | 2016-10-20 → 2016-09-23 A (-27d) | 2016-10-25 → 2016-09-27 A (-28d) |  | 0% → 100% | -1821d → none |  | constraint start no earlier than 2016-10-20 → start no earlier than 2016-09-23 |
| 100 | 企业门户与运营平台主流程回归 | 2016-10-25 → 2016-09-28 A (-27d) | 2016-10-27 → 2016-09-30 A (-27d) |  | 0% → 100% | -1821d → none | 99 → none | constraint none → finish no earlier than 2016-09-29 |
| 101 | **第二轮测试：第一轮缺陷回归及系统功能集成测试（兼容性测试）** | 2009-11-16 → 2016-10-08 A (+2518d) | 2009-11-20 → 2016-10-11 A (+2517d) | 4d? → 3d | 0% → 100% |  |  |  |
| 102 | 第一轮产生缺陷回归 | 2016-10-27 → 2016-10-08 A (-19d) | 2016-10-31 → 2016-10-09 A (-22d) |  | 0% → 100% | -1821d → none | 100 → none | constraint start no earlier than 2015-09-16 → start no earlier than 2016-10-08 |

| ID | Task | Start | Finish | Duration | Complete | Total float | Other |
| --- | --- | --- | --- | --- | --- | --- | --- |
| 103 | 企业门户、运营平台全功能回归（包括新旧功能） | 2016-10-31 → 2016-10-10 A (-21d) | 2016-11-02 → 2016-10-11 A (-22d) |  | 0% → 100% | -1821d → none | constraint none → start no earlier than 2016-10-10 |
| 104 | **第三轮测试：全量回归，全测试用例及缺陷回归** | 2016-11-02 → 2016-10-12 A (-21d) | 2016-11-08 → 2016-10-18 A (-21d) | 4d → 5d | 0% → 100% | -1821d → none |  |
| 105 | 前两轮产生缺陷回归 | 2016-11-02 → 2016-10-12 A (-21d) | 2016-11-04 → 2016-10-13 A (-22d) |  | 0% → 100% | -1821d → none |  |
| 106 | 全流程回归 | 2016-11-04 → 2016-10-14 A (-21d) | 2016-11-08 → 2016-10-18 A (-21d) | 2d → 3d | 0% → 100% | -1821d → none |  |
| 107 | 测试阶段报告编写 | 2016-11-08 → 2016-10-19 (-20d) | 2016-11-08 → 2016-10-19 (-20d) |  |  | 3.62d → 6.62d | constraint start no earlier than 2015-09-24 → start no earlier than 2016-10-19 |
| 108 | 用户手册编写及评审 | 2016-11-08 → 2016-10-19 (-20d) | 2016-11-09 → 2016-10-19 (-21d) | 1d → 0.88d |  | -1821d → 6d | constraint none → finish no earlier than 2016-10-19 |
| 109 | **翌支付部署工作安排** | 2009-11-16 → 2016-09-01 A (+2481d) | 2010-01-28 → 2016-10-27 (+2464d) | 53d? → 41d | 0% → 100% |  |  |
| 110 | **测试环境部署** | 2009-11-16 → 2016-09-01 A (+2481d) | 2009-11-17 → 2016-09-16 A (+2495d) | 1d? → 12d | 0% → 100% |  |  |
| 111 | 测试服务器申请 | 2016-09-19 → 2016-09-01 A (-18d) | 2016-09-21 → 2016-09-02 A (-19d) |  | 0% → 100% |  |  |
| 112 | 基础软件安装 | 2016-09-22 → 2016-09-05 A (-17d) | 2016-09-23 → 2016-09-05 A (-18d) |  | 0% → 100% |  |  |
| 113 | 测试环境配置 | 2016-09-26 → 2016-09-06 A (-20d) | 2016-09-27 → 2016-09-06 A (-21d) |  | 0% → 100% |  |  |
| 114 | 测试环境联调(渠道分离) | 2016-09-28 → 2016-09-07 A (-21d) | 2016-10-04 → 2016-09-16 A (-18d) | 4d → 7d | 0% → 100% |  |  |
| 115 | **正式环境部署** | 2009-11-16 → 2016-09-01 A (+2481d) | 2009-11-17 → 2016-10-21 A (+2530d) | 1d? → 37d | 0% → 100% |  |  |
| 116 | 生产服务器申请 | 2016-10-20 → 2016-09-01 A (-49d) | 2016-10-24 → 2016-09-02 A (-52d) |  | 0% → 100% |  |  |
| 117 | 基础软件安装 | 2016-10-25 → 2016-09-05 A (-50d) | 2016-10-26 → 2016-09-05 A (-51d) |  | 0% → 100% |  |  |
| 118 | 生产环境配置（渠道分离） | 2016-10-27 → 2016-09-20 A (-37d) | 2016-10-28 → 2016-09-20 A (-38d) |  | 0% → 100% |  |  |
| 119 | 生产环境联调 | 2016-10-31 → 2016-10-18 A (-13d) | 2016-11-04 → 2016-10-20 A (-15d) | 4d → 3d | 0% → 100% |  |  |
| 120 | 正式上线 | 2016-11-04 → 2016-10-21 A (-14d) | 2016-11-04 → 2016-10-21 A (-14d) |  | 0% → 100% |  |  |
| 121 | **项目转维工作安排** | 2009-11-16 → 2016-10-24 (+2534d) | 2009-11-24 → 2016-10-27 (+2529d) | 6d? → 4d |  |  |  |
| 122 | 转维资料准备 | 2016-11-07 → 2016-10-24 (-14d) | 2016-11-10 → 2016-10-26 (-15d) |  |  |  |  |
| 123 | 安排转维培训 | 2016-11-11 → 2016-10-27 (-15d) | 2016-11-11 → 2016-10-27 (-15d) |  |  |  |  |
